# Cronograma - Projeto de formatura

How a schedule from MS Project changed from version to version. A marks actual dates.

## Version 1 (saved 2010-07-16, file cronograma160710.mpp)

Note of the change: lista links map

| ID | WBS | Task | Duration | Start | Finish | Total float |
| --- | --- | --- | --- | --- | --- | --- |
| 1 | 1 | **Projeto de Formatura** | 4d | 2010-07-19 14:00 | 2010-08-09 18:00 | 0d |
| 2 | 1.1 | **Desenvolvimento** | 4d | 2010-07-19 14:00 | 2010-08-09 18:00 | 0d |
| 3 | 1.1.1 | **Esqueleto da Aplicação** | 1d | 2010-07-19 14:00 | 2010-07-19 18:00 | 3d |
| 4 | 1.1.1.1 | **Tela de navegação principal** | 1d | 2010-07-19 14:00 | 2010-07-19 18:00 | 3d |
| 5 |  | Localização, botão trânsito, menu rotas | 4h | 2010-07-19 14:00 | 2010-07-19 18:00 | 3d |
| 6 | 1.1.1.2 | **Interface de Tabulação das rotas (criar, deletar, editar)** | 0.75d | 2010-07-19 14:00 | 2010-07-19 17:00 | 3.25d |
| 7 |  | Tela de criação das rotas | 3h | 2010-07-19 14:00 | 2010-07-19 17:00 | 3.25d |
| 8 | 1.1.1.3 | **Interface de Alertas** | 0.75d | 2010-07-19 14:00 | 2010-07-19 17:00 | 3.25d |
| 9 |  | Célula customizada | 3h | 2010-07-19 14:00 | 2010-07-19 17:00 | 3.25d |
| 10 | 1.1.2 | **Módulos** | 4d | 2010-07-19 14:00 | 2010-08-09 18:00 | 0d |
| 11 | 1.1.2.1 | **Mapas** | 1d | 2010-07-19 14:00 | 2010-07-19 18:00 | 3d |
| 12 |  | Estudo e teste do SDK de mapas | 4h | 2010-07-19 14:00 | 2010-07-19 18:00 | 3d |
| 13 | 1.1.2.2 | **Navegação** | 1d | 2010-07-19 14:00 | 2010-07-19 18:00 | 3d |
| 14 |  | SDK de mapa - Search | 4h | 2010-07-19 14:00 | 2010-07-19 18:00 | 3d |
| 15 |  | Implementação de Localização Atual | 4h | 2010-07-19 14:00 | 2010-07-19 18:00 | 3d |
| 16 |  | Implementação de Pins Customizados | 3h | 2010-07-19 14:00 | 2010-07-19 17:00 | 3.25d |
| 17 | 1.1.2.3 | **Implementação de colorização customizada de ruas** | 4d | 2010-07-19 14:00 | 2010-08-09 18:00 | 0d |
| 18 |  | Estudo sobre a fonte de dados das vias | 2h | 2010-07-19 14:00 | 2010-07-19 16:00 | 3.5d |
| 19 |  | Implementação de roteamentos | 8h | 2010-07-19 14:00 | 2010-07-26 18:00 | 2d |
| 20 |  | Implementação de Salvar rotas | 16h | 2010-07-19 14:00 | 2010-08-09 18:00 | 0d |
| 21 |  | Implementação de Instruções para curva-a-curva | 12h | 2010-07-19 14:00 | 2010-08-02 18:00 | 1d |
| 22 | 1.1.2.4 | **Design do Aplicativo** | 0.5d | 2010-07-19 14:00 | 2010-07-19 16:00 | 3.5d |
| 23 |  | Desenho dos icones de alerta | 2h | 2010-07-19 14:00 | 2010-07-19 16:00 | 3.5d |
| 24 |  | Layout para as Telas | 2h | 2010-07-19 14:00 | 2010-07-19 16:00 | 3.5d |
| 25 | 1.1.3 | **Servidor** | 3d | 2010-07-19 14:00 | 2010-08-02 18:00 | 1d |
| 26 |  | Banco de dados | 4h | 2010-07-19 14:00 | 2010-07-19 18:00 | 3d |
| 27 |  | Parser XML | 12h | 2010-07-19 14:00 | 2010-08-02 18:00 | 1d |
| 28 | 1.1.3.3 | **Estatísticas** | 2d | 2010-07-19 14:00 | 2010-07-26 18:00 | 2d |
| 29 |  | Mapear pontos críticos | 8h | 2010-07-19 14:00 | 2010-07-26 18:00 | 2d |
| 30 |  | Previsões | 8h | 2010-07-19 14:00 | 2010-07-26 18:00 | 2d |
| 31 | 1.1.4 | **Esqueleto da Aplicação** | 1d | 2010-07-19 14:00 | 2010-07-19 18:00 | 3d |
| 32 | 1.1.4.1 | **Interface de integrações** | 1d | 2010-07-19 14:00 | 2010-07-19 18:00 | 3d |
| 33 |  | Sms | 4h | 2010-07-19 14:00 | 2010-07-19 18:00 | 3d |
| 34 |  | E-mail | 4h | 2010-07-19 14:00 | 2010-07-19 18:00 | 3d |
| 35 |  | Ligação | 4h | 2010-07-19 14:00 | 2010-07-19 18:00 | 3d |
| 36 |  | Campo Texto padrão iPhone | 4h | 2010-07-19 14:00 | 2010-07-19 18:00 | 3d |
| 37 | 1.1.5 | **Integração** | 1d | 2010-07-19 14:00 | 2010-07-19 18:00 | 3d |
| 38 |  | Lista de contatos | 4h | 2010-07-19 14:00 | 2010-07-19 18:00 | 3d |
| 39 |  | Twitter | 4h | 2010-07-19 14:00 | 2010-07-19 18:00 | 3d |
| 40 |  | Facebook | 4h | 2010-07-19 14:00 | 2010-07-19 18:00 | 3d |
| 41 |  | E-mail | 4h | 2010-07-19 14:00 | 2010-07-19 18:00 | 3d |

## Version 2 (saved 2010-07-20, file cronograma190710.mpp)

Note of the change: Atualizacao do cronograma190710.mpp

Last finish 2010-08-09 → 2010-10-25 (+77d).

Changed:

| ID | Task | Start | Finish | Duration | Total float | Predecessors | Other |
| --- | --- | --- | --- | --- | --- | --- | --- |
| 1 | **Projeto de Formatura** | 2010-07-19 14:00 → 2010-07-19 | 2010-08-09 18:00 → 2010-10-25 (+77d) | 4d → 16.75d |  |  |  |
| 2 | **Desenvolvimento** | 2010-07-19 14:00 → 2010-07-19 | 2010-08-09 18:00 → 2010-10-25 (+77d) | 4d → 16.75d |  |  |  |
| 3 | **Esqueleto da Aplicação** | 2010-07-19 14:00 → 2010-07-19 | 2010-07-19 18:00 → 2010-07-28 (+9d) | 1d → 2.5d | 3d → 0d |  |  |
| 4 | **Tela de navegação principal** | 2010-07-19 14:00 → 2010-07-19 | 2010-07-19 18:00 → 2010-07-21 (+2d) |  | 3d → 0d |  | resources none → 4MA Kido |
| 5 | Localização, botão trânsito, menu rotas | 2010-07-19 14:00 → 2010-07-19 | 2010-07-19 18:00 → 2010-07-21 (+2d) |  | 3d → 0d |  | resources none → 4MA Kido |
| 6 | **Interface de Tabulação das rotas (criar, deletar, editar)** | 2010-07-19 14:00 → 2010-07-21 (+2d) | 2010-07-19 17:00 → 2010-07-26 (+7d) |  | 3.25d → 0d | none → 4 | resources none → 4MA Kido |
| 7 | Tela de criação das rotas | 2010-07-19 14:00 → 2010-07-21 (+2d) | 2010-07-19 17:00 → 2010-07-26 (+7d) |  | 3.25d → 0d | none → 4 | resources none → 4MA Kido |
| 8 | **Interface de Alertas** | 2010-07-19 14:00 → 2010-07-26 (+7d) | 2010-07-19 17:00 → 2010-07-28 (+9d) |  | 3.25d → 0d | none → 6 | resources none → 4MA Kido |
| 9 | Célula customizada | 2010-07-19 14:00 → 2010-07-26 (+7d) | 2010-07-19 17:00 → 2010-07-28 (+9d) |  | 3.25d → 0d | none → 6 | resources none → 4MA Kido |
| 10 | **Módulos** | 2010-07-19 14:00 → 2010-08-02 (+14d) | 2010-08-09 18:00 → 2010-10-25 (+77d) | 4d → 14.25d |  | none → 3 |  |
| 11 | **Mapas** | 2010-07-19 14:00 → 2010-08-02 (+14d) | 2010-07-19 18:00 → 2010-08-04 (+16d) |  | 3d → 0d | none → 3 | resources none → 4MA Kido |
| 12 | Estudo e teste do SDK de mapas | 2010-07-19 14:00 → 2010-08-02 (+14d) | 2010-07-19 18:00 → 2010-08-04 (+16d) |  | 3d → 0d | none → 3 | resources none → 4MA Kido |
| 13 | **Navegação** | 2010-07-19 14:00 → 2010-08-04 (+16d) | 2010-07-19 18:00 → 2010-08-18 (+30d) | 1d → 2.75d | 3d → 0d | none → 11 | resources none → 4MA Kido |
| 14 | SDK de mapa - Search | 2010-07-19 14:00 → 2010-08-04 (+16d) | 2010-07-19 18:00 → 2010-08-11 (+23d) |  | 3d → 0d | none → 11 | resources none → 4MA Kido |
| 15 | Implementação de Localização Atual | 2010-07-19 14:00 → 2010-08-11 (+23d) | 2010-07-19 18:00 → 2010-08-16 (+28d) |  | 3d → 0d | none → 14 | resources none → 4MA Kido |
| 16 | Implementação de Pins Customizados | 2010-07-19 14:00 → 2010-08-16 (+28d) | 2010-07-19 17:00 → 2010-08-18 (+30d) |  | 3.25d → 0d | none → 15 | resources none → 4MA Kido |
| 17 | **Implementação de colorização customizada de ruas** | 2010-07-19 14:00 → 2010-08-23 (+35d) | 2010-08-09 18:00 → 2010-10-20 (+72d) | 4d → 9.5d |  | none → 13 | resources none → 4MA Kido |
| 18 | Estudo sobre a fonte de dados das vias | 2010-07-19 14:00 → 2010-08-23 (+35d) | 2010-07-19 16:00 → 2010-08-23 (+35d) |  | 3.5d → 0d | none → 13 | resources none → 4MA Kido |
| 19 | Implementação de roteamentos | 2010-07-19 14:00 → 2010-08-23 (+35d) | 2010-07-26 18:00 → 2010-09-01 (+37d) |  | 2d → 0d | none → 18 | resources none → 4MA Kido |
| 20 | Implementação de Salvar rotas | 2010-07-19 14:00 → 2010-09-08 (+51d) | 2010-08-09 18:00 → 2010-09-29 (+51d) |  |  | none → 19 | resources none → 4MA Kido |
| 21 | Implementação de Instruções para curva-a-curva | 2010-07-19 14:00 → 2010-09-29 (+72d) | 2010-08-02 18:00 → 2010-10-20 (+79d) |  | 1d → 0d | none → 20 | resources none → 4MA Kido |
| 22 | **Design do Aplicativo** | 2010-07-19 14:00 → 2010-10-20 (+93d) | 2010-07-19 16:00 → 2010-10-25 (+98d) | 0.5d → 1d | 3.5d → 0d | none → 17 | resources none → 4MA Kido |
| 23 | Desenho dos icones de alerta | 2010-07-19 14:00 → 2010-10-20 (+93d) | 2010-07-19 16:00 → 2010-10-20 (+93d) |  | 3.5d → 0d | none → 17 | resources none → 4MA Kido |
| 24 | Layout para as Telas | 2010-07-19 14:00 → 2010-10-25 (+98d) | 2010-07-19 16:00 → 2010-10-25 (+98d) |  | 3.5d → 0d | none → 23 | resources none → 4MA Kido |
| 25 | **Servidor** | 2010-07-19 14:00 → 2010-07-19 | 2010-08-02 18:00 → 2010-08-30 (+28d) | 3d → 8d | 1d → 8.75d |  |  |
| 26 | Banco de dados | 2010-07-19 14:00 → 2010-07-19 | 2010-07-19 18:00 → 2010-07-21 (+2d) |  | 3d → 8.75d |  | resources none → 4MA Marcio |
| 27 | Parser XML | 2010-07-19 14:00 → 2010-07-21 (+2d) | 2010-08-02 18:00 → 2010-08-09 (+7d) |  | 1d → 8.75d | none → 26 | resources none → 4MA Marcio |
| 28 | **Estatísticas** | 2010-07-19 14:00 → 2010-08-09 (+21d) | 2010-07-26 18:00 → 2010-08-30 (+35d) | 2d → 4d | 2d → 8.75d | none → 27 | resources none → 4MA Marcio |
| 29 | Mapear pontos críticos | 2010-07-19 14:00 → 2010-08-09 (+21d) | 2010-07-26 18:00 → 2010-08-18 (+23d) |  | 2d → 8.75d | none → 27 | resources none → 4MA Marcio |
| 30 | Previsões | 2010-07-19 14:00 → 2010-08-18 (+30d) | 2010-07-26 18:00 → 2010-08-30 (+35d) |  | 2d → 8.75d | none → 29 | resources none → 4MA Marcio |
| 31 | **Esqueleto da Aplicação** | 2010-07-19 14:00 → 2010-07-19 | 2010-07-19 18:00 → 2010-07-21 (+2d) |  | 3d → 15.75d |  |  |
| 32 | **Interface de integrações** | 2010-07-19 14:00 → 2010-07-19 | 2010-07-19 18:00 → 2010-07-21 (+2d) |  | 3d → 15.75d |  |  |
| 33 | Sms | 2010-07-19 14:00 → 2010-07-19 | 2010-07-19 18:00 → 2010-07-21 (+2d) |  | 3d → 15.75d |  |  |
| 34 | E-mail | 2010-07-19 14:00 → 2010-07-19 | 2010-07-19 18:00 → 2010-07-21 (+2d) |  | 3d → 15.75d |  |  |
| 35 | Ligação | 2010-07-19 14:00 → 2010-07-19 | 2010-07-19 18:00 → 2010-07-21 (+2d) |  | 3d → 15.75d |  |  |
| 36 | Campo Texto padrão iPhone | 2010-07-19 14:00 → 2010-07-19 | 2010-07-19 18:00 → 2010-07-21 (+2d) |  | 3d → 15.75d |  |  |
| 37 | **Integração** | 2010-07-19 14:00 → 2010-07-19 | 2010-07-19 18:00 → 2010-07-21 (+2d) |  | 3d → 15.75d |  |  |
| 38 | Lista de contatos | 2010-07-19 14:00 → 2010-07-19 | 2010-07-19 18:00 → 2010-07-21 (+2d) |  | 3d → 15.75d |  |  |
| 39 | Twitter | 2010-07-19 14:00 → 2010-07-19 | 2010-07-19 18:00 → 2010-07-21 (+2d) |  | 3d → 15.75d |  |  |
| 40 | Facebook | 2010-07-19 14:00 → 2010-07-19 | 2010-07-19 18:00 → 2010-07-21 (+2d) |  | 3d → 15.75d |  |  |
| 41 | E-mail | 2010-07-19 14:00 → 2010-07-19 | 2010-07-19 18:00 → 2010-07-21 (+2d) |  | 3d → 15.75d |  |  |

## Version 3 (saved 2010-09-29, file cronograma290910.mpp)

Note of the change: Cronograma atualizado

Last finish 2010-10-25 → 2010-10-22 (-3d). Complete tasks 0 → 3.

Removed: 6 Interface de Tabulação das rotas (criar, deletar, editar); 7 Tela de criação das rotas; 20 Implementação de Salvar rotas; 35 Ligação; 37 Integração; 38 Lista de contatos; 39 Twitter; 41 E-mail

Changed:

| ID | Task | Start | Finish | Duration | Complete | Total float | Predecessors | Other |
| --- | --- | --- | --- | --- | --- | --- | --- | --- |
| 1 | **Projeto de Formatura** | 2010-07-19 → 2010-09-01 A (+44d) | 2010-10-25 → 2010-10-22 (-3d) | 16.75d → 28.75d | 0% → 29% |  |  |  |
| 2 | **Desenvolvimento** | 2010-07-19 → 2010-09-01 A (+44d) | 2010-10-25 → 2010-10-22 (-3d) | 16.75d → 28.75d | 0% → 29% |  |  |  |
| 3 | **Esqueleto da Aplicação** | 2010-07-19 → 2010-09-01 A (+44d) | 2010-07-28 → 2010-10-05 (+69d) | 2.5d → 19.5d | 0% → 68% | 0d → -7.59d |  |  |
| 4 | **Tela de navegação principal** | 2010-07-19 → 2010-09-01 A (+44d) | 2010-07-21 → 2010-09-03 A (+44d) | 1d → 1.62d | 0% → 100% | 0d → none |  |  |
| 5 | Localização, botão trânsito, menu rotas | 2010-07-19 → 2010-09-01 A (+44d) | 2010-07-21 → 2010-09-03 A (+44d) | 4h → 6.5h | 0% → 100% | 0d → none |  | resources 4MA Kido → 4MA Kido [61.5%] |
| 6 | **Interface de Alertas** | 2010-07-26 → 2010-10-04 (+70d) | 2010-07-28 → 2010-10-05 (+69d) |  |  | 0d → -7.59d | Interface de Tabulação das rotas (criar, deletar, editar) → none |  |
| 7 | Célula customizada | 2010-07-26 → 2010-10-04 (+70d) | 2010-07-28 → 2010-10-05 (+69d) |  |  | 0d → -7.59d | Interface de Tabulação das rotas (criar, deletar, editar) → none | constraint none → start no earlier than 2010-10-04 |
| 8 | **Módulos** | 2010-08-02 → 2010-09-02 A (+31d) | 2010-10-25 → 2010-10-22 (-3d) | 14.25d → 28.12d | 0% → 39% |  |  |  |
| 9 | **Mapas** | 2010-08-02 → 2010-09-02 A (+31d) | 2010-08-04 → 2010-09-13 A (+40d) | 1d → 5.88d | 0% → 100% | 0d → none |  |  |
| 10 | Estudo e teste do SDK de mapas | 2010-08-02 → 2010-09-02 A (+31d) | 2010-08-04 → 2010-09-13 A (+40d) | 4h → 23.5h | 0% → 100% | 0d → none |  | resources 4MA Kido → 4MA Kido [17%] |
| 11 | **Navegação** | 2010-08-04 → 2010-10-05 (+62d) | 2010-08-18 → 2010-10-08 (+51d) |  |  |  |  |  |
| 12 | SDK de mapa - Search | 2010-08-04 → 2010-10-05 (+62d) | 2010-08-11 → 2010-10-07 (+57d) |  |  |  |  |  |
| 13 | Implementação de Localização Atual | 2010-08-11 → 2010-10-07 (+57d) | 2010-08-16 → 2010-10-08 (+53d) |  |  |  |  |  |
| 14 | Implementação de Pins Customizados | 2010-08-16 → 2010-10-08 (+53d) | 2010-08-18 → 2010-10-08 (+51d) |  |  |  |  |  |
| 15 | **Implementação de colorização customizada de ruas** | 2010-08-23 → 2010-10-08 (+46d) |  | 9.5d → 5.5d |  |  |  |  |
| 16 | Estudo sobre a fonte de dados das vias | 2010-08-23 → 2010-10-08 (+46d) | 2010-08-23 → 2010-10-12 (+50d) |  |  |  |  |  |
| 17 | Implementação de roteamentos | 2010-08-23 → 2010-10-12 (+50d) | 2010-09-01 → 2010-10-15 (+44d) |  |  |  |  |  |
| 18 | Implementação de Instruções para curva-a-curva | 2010-09-29 → 2010-10-15 (+16d) |  |  |  |  | Implementação de Salvar rotas → 17 |  |
| 19 | **Design do Aplicativo** |  | 2010-10-25 → 2010-10-22 (-3d) |  |  |  |  |  |
| 20 | Desenho dos icones de alerta |  | 2010-10-20 → 2010-10-21 (+1d) |  |  |  |  |  |
| 21 | Layout para as Telas | 2010-10-25 → 2010-10-21 (-4d) | 2010-10-25 → 2010-10-22 (-3d) |  |  |  |  |  |
| 22 | **Servidor** | 2010-07-19 → 2010-09-01 A (+44d) | 2010-08-30 → 2010-09-15 (+16d) |  | 0% → 13% | 8.75d → 20.75d |  |  |
| 23 | Banco de dados | 2010-07-19 → 2010-09-01 A (+44d) | 2010-07-21 → 2010-09-02 A (+43d) |  | 0% → 100% | 8.75d → none |  |  |
| 24 | Parser XML | 2010-07-21 → 2010-09-03 (+44d) | 2010-08-09 → 2010-09-09 (+31d) |  |  | 8.75d → 20.75d |  |  |
| 25 | **Estatísticas** | 2010-08-09 → 2010-09-09 (+31d) | 2010-08-30 → 2010-09-15 (+16d) |  |  | 8.75d → 20.75d |  |  |
| 26 | Mapear pontos críticos | 2010-08-09 → 2010-09-09 (+31d) | 2010-08-18 → 2010-09-10 (+23d) |  |  | 8.75d → 20.75d |  |  |
| 27 | Previsões | 2010-08-18 → 2010-09-10 (+23d) | 2010-08-30 → 2010-09-15 (+16d) |  |  | 8.75d → 20.75d |  |  |
| 28 | **Esqueleto da Aplicação** | 2010-07-19 → 2010-10-18 (+91d) | 2010-07-21 → 2010-10-19 (+90d) |  |  | 15.75d → 1.38d |  |  |
| 29 | **Interface de integrações** | 2010-07-19 → 2010-10-18 (+91d) | 2010-07-21 → 2010-10-19 (+90d) |  |  | 15.75d → 1.38d |  |  |
| 30 | Sms | 2010-07-19 → 2010-10-18 (+91d) | 2010-07-21 → 2010-10-19 (+90d) |  |  | 15.75d → 1.38d |  | constraint none → start no earlier than 2010-10-18 |
| 31 | E-mail | 2010-07-19 → 2010-10-18 (+91d) | 2010-07-21 → 2010-10-19 (+90d) |  |  | 15.75d → 1.38d |  | constraint none → start no earlier than 2010-10-18 |
| 32 | Facebook | 2010-07-19 → 2010-10-18 (+91d) | 2010-07-21 → 2010-10-19 (+90d) |  |  | 15.75d → 1.38d |  | constraint none → start no earlier than 2010-10-18 |
| 33 | Campo Texto padrão iPhone | 2010-07-19 → 2010-10-18 (+91d) | 2010-07-21 → 2010-10-19 (+90d) |  |  | 15.75d → 1.38d |  | constraint none → start no earlier than 2010-10-18 |
